# Разработка_и_внедрение_ИСУП_Едленко

Schedule from MS Project, 2015-09-01 to 2015-09-14.

## Calendars

- Проект "Разработка и внедрение ИСУП": Mon-Fri 09:00-13:00, 14:00-18:00; Sat-Sun off.

## Schedule

| ID | Task | Type | Duration | Start | Finish | Predecessors | Total slack |
| --- | --- | --- | --- | --- | --- | --- | --- |
| 1 | Подписание договора на разработку ИСУП | milestone | 0d | 2015-09-01 | 2015-09-01 |  | 10d |
| 2 | Подготовительные работы |  | 10d | 2015-09-01 | 2015-09-14 |  | 0d |
| 3 | Определение целей и назначения системы |  | 5d | 2015-09-01 | 2015-09-07 |  | 0d |
| 4 | Определение участников проекта |  | 5d | 2015-09-08 | 2015-09-14 | 3 | 0d |
| 5 | Разработка устава проекта |  | 5d | 2015-09-08 | 2015-09-14 | 4SS | 0d |
